Schedule from Planner, 2022-01-03 to 2022-01-21.

## Calendars

- Défaut: Mon-Fri 08:00-12:00, 13:00-17:00; Sat-Sun off.

## Resources

| Resource |
| --- |
| Aurélien VILMINOT |
| Damien CLAUZON |
| Guilherme KLEIN |
| Léon ROUSSEL |
| Pierre ARVY |

## Schedule

| ID | WBS | Task | Duration | Start | Finish | Predecessors | Complete | Constraint | Resources | Work |
| --- | --- | --- | --- | --- | --- | --- | --- | --- | --- | --- |
| 1 | 1 | Organisation Projet + Séance machine | 1d | 2022-01-03 | 2022-01-03 |  | 7% |  | Aurélien VILMINOT [20%]; Damien CLAUZON [20%]; Guilherme KLEIN [20%]; Léon ROUSSEL [20%]; Pierre ARVY [20%] | 8h |
| 2 | 2 | **Sprint 1 - Hello World** |  | 2022-01-03 | 2022-01-07 |  |  |  |  | 160h |
| 3 | 2.1 | **Développement Hello World** |  | 2022-01-04 | 2022-01-07 | 1 |  |  | Aurélien VILMINOT; Damien CLAUZON; Guilherme KLEIN | 64h |
| 4 | 2.1.1 | Parser H-W | 2d | 2022-01-04 | 2022-01-05 |  |  | must start on 2022-01-04 | Damien CLAUZON | 16h |
| 5 | 2.1.2 | Lexer sans extension | 2d | 2022-01-04 | 2022-01-05 |  |  | must start on 2022-01-04 | Guilherme KLEIN [50%] | 8h |
| 6 | 2.1.3 | Analyse Contextuelle H-W | 3d | 2022-01-04 | 2022-01-06 |  |  | must start on 2022-01-04 | Aurélien VILMINOT [67%] | 16h |
| 7 | 2.1.4 | Décoration Arbre H-W | 3d | 2022-01-04 | 2022-01-06 |  |  | must start on 2022-01-04 | Aurélien VILMINOT [67%] | 16h |
| 8 | 2.1.5 | Génération de code H-W | 2d | 2022-01-06 | 2022-01-07 | 5, 4, 7SS, 6SS |  |  | Damien CLAUZON [50%] | 8h |
| 9 | 2.2 | **Tests Hello World** |  | 2022-01-04 | 2022-01-07 | 1 |  |  | Léon ROUSSEL; Pierre ARVY | 80h |
| 10 | 2.2.1 | Tests conformité Lexer/Parser H-W | 2d | 2022-01-04 | 2022-01-05 | 8 |  | must start on 2022-01-04 | Léon ROUSSEL [50%]; Pierre ARVY [50%] | 16h |
| 11 | 2.2.2 | Tests conformité Analyse/Décoration H-W | 2d | 2022-01-04 | 2022-01-05 |  |  | must start on 2022-01-04 | Guilherme KLEIN [33%]; Léon ROUSSEL [33%]; Pierre ARVY [33%] | 16h |
| 12 | 2.2.3 | Tests conformité Génération de code H-W | 2d | 2022-01-05 | 2022-01-06 |  |  | must start on 2022-01-05 | Léon ROUSSEL [25%]; Pierre ARVY [25%] | 8h |
| 13 | 2.2.4 | Tests unitaires Lexer/Parser H-W | 2d | 2022-01-06 | 2022-01-07 | 5, 4 |  |  | Damien CLAUZON [33%]; Guilherme KLEIN [33%]; Léon ROUSSEL [33%] | 16h |
| 14 | 2.2.5 | Tests unitaires Analyse/Décoration H-W | 1d | 2022-01-07 | 2022-01-07 | 7, 6 |  |  | Aurélien VILMINOT; Pierre ARVY | 16h |
| 15 | 2.2.6 | Tests unitaires Génération de code H-W | 1d | 2022-01-07 | 2022-01-07 |  |  | must start on 2022-01-07 | Damien CLAUZON [50%]; Pierre ARVY [50%] | 8h |
| 16 | 2.3 | Documentation Hello World | 5d | 2022-01-03 | 2022-01-07 |  |  | start no earlier than 2022-01-03 | Aurélien VILMINOT [4%]; Damien CLAUZON [4%]; Guilherme KLEIN [4%]; Léon ROUSSEL [4%]; Pierre ARVY [4%] | 8h |
| 17 | 2.4 | **Extension** |  | 2022-01-03 | 2022-01-07 |  |  |  |  | 8h |
| 18 | 2.4.1 | Recheche biblio extension TAB + analyse énergétique | 5d | 2022-01-03 | 2022-01-07 |  |  | must start on 2022-01-03 | Aurélien VILMINOT [4%]; Damien CLAUZON [4%]; Guilherme KLEIN [4%]; Léon ROUSSEL [4%]; Pierre ARVY [4%] | 8h |
| 19 | 3 | **Sprint 2 - Sans Objet** |  | 2022-01-10 | 2022-01-14 |  |  |  |  | 184h |
| 20 | 3.1 | **Développement Sans Objet** |  | 2022-01-10 | 2022-01-14 | 3 |  |  | Aurélien VILMINOT; Damien CLAUZON; Guilherme KLEIN | 56h |
| 21 | 3.1.1 | Parser S-O | 4d | 2022-01-10 | 2022-01-13 |  |  | must start on 2022-01-10 | Damien CLAUZON [8%]; Guilherme KLEIN [8%]; Pierre ARVY [8%] | 8h |
| 22 | 3.1.2 | Analyse Contextuelle S-O | 4d | 2022-01-10 | 2022-01-13 |  |  | must start on 2022-01-10 | Aurélien VILMINOT [25%]; Guilherme KLEIN [25%] | 16h |
| 23 | 3.1.3 | Décoration Arbre S-O | 4d | 2022-01-10 | 2022-01-13 |  |  | must start on 2022-01-10 | Aurélien VILMINOT [25%]; Guilherme KLEIN [25%] | 16h |
| 24 | 3.1.4 | Génération de code S-O | 4d | 2022-01-11 | 2022-01-14 |  |  | must start on 2022-01-11 | Damien CLAUZON [50%] | 16h |

| ID | WBS | Task | Duration | Start | Finish | Predecessors | Complete | Constraint | Resources | Work |
| --- | --- | --- | --- | --- | --- | --- | --- | --- | --- | --- |
| 25 | 3.2 | **Tests Sans Objet** |  | 2022-01-10 | 2022-01-14 | 9 |  |  | Léon ROUSSEL; Pierre ARVY | 80h |
| 26 | 3.2.1 | Tests conformité Lexer/Parser S-O | 2d | 2022-01-10 | 2022-01-11 |  |  | must start on 2022-01-10 | Léon ROUSSEL [50%]; Pierre ARVY [50%] | 16h |
| 27 | 3.2.2 | Tests conformité Analyse/Décoration S-O | 2d | 2022-01-10 | 2022-01-11 |  |  | must start on 2022-01-10 | Léon ROUSSEL [50%]; Pierre ARVY [50%] | 16h |
| 28 | 3.2.3 | Tests conformité Génération de code S-O | 2d | 2022-01-11 | 2022-01-12 |  |  | must start on 2022-01-11 | Léon ROUSSEL [25%]; Pierre ARVY [25%] | 8h |
| 29 | 3.2.4 | Tests unitaires Lexer/Parser S-o | 3d | 2022-01-12 | 2022-01-14 | 21SS | 1% | start no earlier than 2022-01-12 | Guilherme KLEIN [17%]; Léon ROUSSEL [17%] | 8h |
| 30 | 3.2.5 | Tests unitaires Analyse/Décoration S-o | 3d | 2022-01-12 | 2022-01-14 | 23SS, 22SS |  | start no earlier than 2022-01-12 | Aurélien VILMINOT [33%]; Pierre ARVY [33%] | 16h |
| 31 | 3.2.6 | Tests unitaires Génération de code S-o | 2d | 2022-01-13 | 2022-01-14 | 24SS |  | start no earlier than 2022-01-13 | Damien CLAUZON [33%]; Léon ROUSSEL [33%]; Pierre ARVY [33%] | 16h |
| 32 | 3.3 | Documentation Sans Objet | 5d | 2022-01-10 | 2022-01-14 | 16 |  | start no earlier than 2022-01-10 | Aurélien VILMINOT [4%]; Damien CLAUZON [4%]; Guilherme KLEIN [4%]; Léon ROUSSEL [4%]; Pierre ARVY [4%] | 8h |
| 33 | 3.4 | **Extension** |  | 2022-01-10 | 2022-01-14 |  |  |  |  | 40h |
| 34 | 3.4.1 | Parser/Analyse contextuelle extension TAB | 5d | 2022-01-10 | 2022-01-14 | 16 |  | start no earlier than 2022-01-10 | Aurélien VILMINOT [13%]; Damien CLAUZON [13%]; Guilherme KLEIN [13%] | 16h |
| 35 | 3.4.2 | Test conformité extension TAB | 5d | 2022-01-10 | 2022-01-14 | 18 |  | start no earlier than 2022-01-10 | Léon ROUSSEL [30%]; Pierre ARVY [30%] | 24h |
| 36 | 4 | **Sprint 3 - Avec Objet** |  | 2022-01-17 | 2022-01-21 |  |  |  |  | 208h |
| 37 | 4.1 | **Développement Avec Objet** |  | 2022-01-17 | 2022-01-21 | 20 |  |  | Aurélien VILMINOT; Damien CLAUZON; Guilherme KLEIN | 96h |
| 38 | 4.1.1 | Parser A-O | 4d | 2022-01-17 | 2022-01-20 |  |  | start no earlier than 2022-01-17 | Damien CLAUZON [17%]; Guilherme KLEIN [17%]; Pierre ARVY [17%] | 16h |
| 39 | 4.1.2 | Analyse contextuelle A-O | 4d | 2022-01-17 | 2022-01-20 |  |  | start no earlier than 2022-01-17 | Aurélien VILMINOT [38%]; Guilherme KLEIN [38%] | 24h |
| 40 | 4.1.3 | Décoration Arbre A-O | 4d | 2022-01-17 | 2022-01-20 |  |  | start no earlier than 2022-01-17 | Aurélien VILMINOT [38%]; Guilherme KLEIN [38%] | 24h |
| 41 | 4.1.4 | Génération de code A-O | 4d | 2022-01-18 | 2022-01-21 |  |  | start no earlier than 2022-01-18 | Damien CLAUZON | 32h |
| 42 | 4.2 | **Tests Avec Objet** |  | 2022-01-17 | 2022-01-21 | 25 |  |  | Léon ROUSSEL; Pierre ARVY | 72h |
| 43 | 4.2.1 | Conformité Lexer/Parser A-O | 2d | 2022-01-17 | 2022-01-18 |  |  | start no earlier than 2022-01-17 | Léon ROUSSEL [25%]; Pierre ARVY [25%] | 8h |
| 44 | 4.2.2 | Conformité Analyse/Décoration A-O | 2d | 2022-01-17 | 2022-01-18 |  |  | start no earlier than 2022-01-17 | Léon ROUSSEL [25%]; Pierre ARVY [25%] | 8h |
| 45 | 4.2.3 | Conformité Génération de code A-O | 2d | 2022-01-18 | 2022-01-19 |  |  | start no earlier than 2022-01-18 | Léon ROUSSEL [25%]; Pierre ARVY [25%] | 8h |
| 46 | 4.2.4 | Unitaires Lexer/Parser A-O | 3d | 2022-01-19 | 2022-01-21 | 38SS |  | start no earlier than 2022-01-19 | Damien CLAUZON [22%]; Guilherme KLEIN [22%]; Léon ROUSSEL [22%] | 16h |
| 47 | 4.2.5 | Unitaires Analyse/Décoration A-O | 3d | 2022-01-19 | 2022-01-21 | 40SS, 39SS |  | start no earlier than 2022-01-19 | Aurélien VILMINOT [33%]; Pierre ARVY [33%] | 16h |
| 48 | 4.2.6 | Unitaires Génération de code A-O | 2d | 2022-01-20 | 2022-01-21 | 41SS |  | start no earlier than 2022-01-20 | Damien CLAUZON [33%]; Léon ROUSSEL [33%]; Pierre ARVY [33%] | 16h |
| 49 | 4.3 | Documentation Avec Objet | 1d | 2022-01-17 | 2022-01-17 | 32 |  | start no earlier than 2022-01-17 | Aurélien VILMINOT [20%]; Damien CLAUZON [20%]; Guilherme KLEIN [20%]; Léon ROUSSEL [20%]; Pierre ARVY [20%] | 8h |
| 50 | 4.4 | Analyse énergétique + documentation | 5d | 2022-01-17 | 2022-01-21 |  |  | start no earlier than 2022-01-17 | Aurélien VILMINOT [10%]; Pierre ARVY [10%] | 8h |

| ID | WBS | Task | Duration | Start | Finish | Predecessors | Constraint | Resources | Work |
| --- | --- | --- | --- | --- | --- | --- | --- | --- | --- |
| 51 | 4.5 | **Extension** |  | 2022-01-17 | 2022-01-21 |  |  |  | 24h |
| 52 | 4.5.1 | Décoration arbre/Génération de code extension TAB | 5d | 2022-01-17 | 2022-01-21 | 34 | start no earlier than 2022-01-17 | Aurélien VILMINOT [7%]; Damien CLAUZON [7%]; Guilherme KLEIN [7%] | 8h |
| 53 | 4.5.2 | Documentation Extension | 5d | 2022-01-17 | 2022-01-21 |  | start no earlier than 2022-01-17 | Aurélien VILMINOT [10%]; Pierre ARVY [10%] | 8h |
| 54 | 4.5.3 | Tests Unitaires extension TAB | 5d | 2022-01-17 | 2022-01-21 |  | start no earlier than 2022-01-17 | Léon ROUSSEL [10%]; Pierre ARVY [10%] | 8h |
